# Sample project

Schedule from MS Project, 2022-01-01 to 2022-05-13, A marks actual dates.

## Calendars

- Standard: Mon-Fri 08:00-12:00, 13:00-17:00; Sat-Sun off.

## Resources

| Resource |
| --- |
| Customer |
| Contractor |
| Developer 1 |
| Developer 2 |
| Analyst 1 |
| Analyst2 |

## Schedule

| ID | WBS | Task | Type | Duration | Start | Finish | Predecessors | Complete | Remaining | Total slack | Free slack | Resources | Work | Actual work |
| --- | --- | --- | --- | --- | --- | --- | --- | --- | --- | --- | --- | --- | --- | --- |
| 1 | 1 | Project's start | milestone | 0d | 2022-01-01 | 2022-01-01 |  |  |  | 95d |  |  |  |  |
| 3 | 2 | **Software system development project** |  | 95d? | 2022-01-03 A | 2022-05-13 |  | 2% | 93.44d? | 0d |  |  | 1920h | 36h |
| 4 | 2.1 | **Initiating** |  | 6d | 2022-01-03 A | 2022-01-10 |  | 38% | 3.75d | 0d |  |  | 96h | 36h |
| 5 | 2.1.1 | Kick-off meeting |  | 1d | 2022-01-03 A | 2022-01-03 A | 1 | 100% |  |  |  | Customer; Contractor | 16h | 16h |
| 6 | 2.1.2 | Contract's negotiations |  | 5d | 2022-01-04 A | 2022-01-10 | 5 | 25% | 3.75d | 0d |  | Customer; Contractor | 80h | 20h |
| 7 | 2.1.3 | Contract signed | milestone | 0d | 2022-01-10 | 2022-01-10 | 6 |  |  | 0d |  |  |  |  |
| 9 | 2.2 | **Planning and analysis** |  | 27d | 2022-01-11 | 2022-02-16 |  |  |  | 0d |  |  | 256h |  |
| 10 | 2.2.1 | Business-processes' examination |  | 10d | 2022-01-11 | 2022-01-24 | 7 |  |  | 0d |  | Contractor | 80h |  |
| 11 | 2.2.2 | Creating a report |  | 5d | 2022-01-25 | 2022-01-31 | 10 |  |  | 0d |  | Contractor | 40h |  |
| 12 | 2.2.3 | Report Delivery |  | 5d | 2022-02-01 | 2022-02-07 | 11 |  |  | 0d |  | Contractor | 40h |  |
| 13 | 2.2.4 | Detailed shedule delivery |  | 5d | 2022-02-08 | 2022-02-14 | 12 |  |  | 2d |  | Contractor | 40h |  |
| 14 | 2.2.5 | Project charter delivery |  | 7d | 2022-02-08 | 2022-02-16 | 12 |  |  | 0d |  | Contractor | 56h |  |
| 15 | 2.2.6 | Planning and analysis phase completed | milestone | 0d | 2022-02-16 | 2022-02-16 | 11, 12, 13, 14 |  |  | 0d |  |  |  |  |
| 17 | 2.3 | **Development** |  | 24d? | 2022-02-17 | 2022-03-22 |  |  |  | 0d |  |  | 424h |  |
| 18 | 2.3.1 | Infrastructure preparation |  | 7d | 2022-02-17 | 2022-02-25 | 15 |  |  | 16d | 0d | Customer | 56h |  |
| 19 | 2.3.2 | Infrastructure ready |  | 1d? | 2022-02-28 | 2022-02-28 | 18 |  |  | 16d |  |  |  |  |
| 20 | 2.3.3 | **Coding and initial testing** |  | 24d | 2022-02-17 | 2022-03-22 |  |  |  | 0d |  |  | 368h |  |
| 21 | 2.3.3.1 | **Subsystem 1** |  | 22d | 2022-02-17 | 2022-03-18 |  |  |  | 2d |  |  | 176h |  |
| 22 | 2.3.3.1.1 | **Module 1** |  | 13d | 2022-02-17 | 2022-03-07 |  |  |  | 2d |  |  | 104h |  |
| 23 | 2.3.3.1.1.1 | Coding |  | 10d | 2022-02-17 | 2022-03-02 | 15 |  |  | 2d | 0d | Developer 1 | 80h |  |
| 24 | 2.3.3.1.1.2 | Testing |  | 3d | 2022-03-03 | 2022-03-07 | 23 |  |  | 2d | 0d | Developer 1 | 24h |  |
| 25 | 2.3.3.1.2 | **Module 2** |  | 9d | 2022-03-08 | 2022-03-18 |  |  |  | 2d |  |  | 72h |  |
| 26 | 2.3.3.1.2.1 | Coding |  | 7d | 2022-03-08 | 2022-03-16 | 24 |  |  | 2d | 0d | Developer 1 | 56h |  |
| 27 | 2.3.3.1.2.2 | Testing |  | 2d | 2022-03-17 | 2022-03-18 | 26 |  |  | 2d |  | Developer 1 | 16h |  |

| ID | WBS | Task | Type | Duration | Start | Finish | Predecessors | Total slack | Resources | Work |
| --- | --- | --- | --- | --- | --- | --- | --- | --- | --- | --- |
| 28 | 2.3.3.2 | **Subsystem 2** |  | 24d | 2022-02-17 | 2022-03-22 |  | 0d |  | 192h |
| 29 | 2.3.3.2.1 | **Module 3** |  | 9d | 2022-02-17 | 2022-03-01 |  | 0d |  | 72h |
| 30 | 2.3.3.2.1.1 | Coding |  | 8d | 2022-02-17 | 2022-02-28 | 15 | 0d | Developer 2 | 64h |
| 31 | 2.3.3.2.1.2 | Testing |  | 1d | 2022-03-01 | 2022-03-01 | 30 | 0d | Developer 2 | 8h |
| 32 | 2.3.3.2.2 | **Module 4** |  | 15d | 2022-03-02 | 2022-03-22 |  | 0d |  | 120h |
| 33 | 2.3.3.2.2.1 | Coding |  | 12d | 2022-03-02 | 2022-03-17 | 31 | 0d | Developer 2 | 96h |
| 34 | 2.3.3.2.2.2 | Testing |  | 3d | 2022-03-18 | 2022-03-22 | 33 | 0d | Developer 2 | 24h |
| 35 | 2.3.4 | All coding done and ready for acceptance testing | milestone | 0d | 2022-03-22 | 2022-03-22 | 19, 20 | 0d |  |  |
| 37 | 2.4 | **Acceptance testing** |  | 30d | 2022-03-23 | 2022-05-03 |  | 0d |  | 1056h |
| 38 | 2.4.1 | Modules' testing |  | 5d | 2022-03-23 | 2022-03-29 | 35 | 0d | Analyst 1; Developer 1; Developer 2 | 120h |
| 39 | 2.4.2 | Perfomance testing |  | 5d | 2022-03-23 | 2022-03-29 | 35 | 0d | Analyst2; Developer 2 | 80h |
| 40 | 2.4.3 | Integration testing |  | 7d | 2022-03-30 | 2022-04-07 | 38, 39 | 0d | Analyst 1 | 56h |
| 41 | 2.4.4 | Error correction |  | 5d | 2022-04-08 | 2022-04-14 | 40 | 0d | Analyst 1; Analyst2; Developer 1; Developer 2 | 160h |
| 42 | 2.4.5 | New requirments' implementation |  | 7d | 2022-04-15 | 2022-04-25 | 41 | 0d | Analyst 1; Analyst2; Developer 1; Developer 2 | 224h |
| 43 | 2.4.6 | **Testing - second iteration** |  | 6d | 2022-04-26 | 2022-05-03 |  | 0d | Analyst 1; Analyst2; Contractor; Customer; Developer 1; Developer 2 | 416h |
| 44 | 2.4.6.1 | Modules' testing |  | 3d | 2022-04-26 | 2022-04-28 | 38, 39, 40, 41, 42 | 0d | Analyst 1; Developer 1; Developer 2 | 72h |
| 45 | 2.4.6.2 | Perfomance testing |  | 2d | 2022-04-26 | 2022-04-27 | 38, 39, 40, 41, 42 | 1d | Analyst2; Developer 2 | 32h |
| 46 | 2.4.6.3 | Integration testing |  | 3d | 2022-04-29 | 2022-05-03 | 44, 45 | 0d | Analyst 1 | 24h |
| 47 | 2.4.7 | System accepted successfully | milestone | 0d | 2022-05-03 | 2022-05-03 | 42, 43 | 0d |  |  |
| 49 | 2.5 | **Work closing** |  | 8d | 2022-05-04 | 2022-05-13 |  | 0d |  | 88h |
| 50 | 2.5.1 | Certificate of completion's signment |  | 3d | 2022-05-04 | 2022-05-06 | 47 | 0d | Customer; Contractor | 48h |
| 51 | 2.5.2 | Billing and paymemts |  | 5d | 2022-05-09 | 2022-05-13 | 50 | 0d | Contractor | 40h |
| 52 | 2.5.3 | Work accomplised | milestone | 0d | 2022-05-06 | 2022-05-06 | 50 | 5d |  |  |
| 53 | 2.5.4 | Contract closed | milestone | 0d | 2022-05-06 | 2022-05-06 | 50 | 5d |  |  |
